# 1150080141_LAB51(B2)

How a schedule from MS Project changed from version to version. A marks actual dates.

## Version 1 (saved 2025-10-04, file 1150080141_LAB53.mpp)

| ID | WBS | Task | Duration | Start | Finish | Predecessors | Total float |
| --- | --- | --- | --- | --- | --- | --- | --- |
| 1 | 1 | **1150080141_DX_MY** | 23d | 2022-11-01 | 2022-12-02 |  | 0d |
| 2 | 1.1 | **Kiểm thử đơn vị** | 15.5d | 2022-11-01 | 2022-11-23 |  | 0d |
| 3 |  | Kiểm thử đơn vị | 8d | 2022-11-01 | 2022-11-10 |  | 0d |
| 4 |  | Kiểm thử tích hợp | 9.5d | 2022-11-09 | 2022-11-23 | 3FS-2d | 0d |
| 5 | 1.2 | **Kiểm thử hệ thống** | 7.5d | 2022-11-23 | 2022-12-02 |  | 0d |
| 6 |  | Kiểm thử chức năng | 5d | 2022-11-23 | 2022-11-30 | 4 | 0d |
| 7 |  | Kiểm thử hiệu suất | 3d | 2022-11-23 | 2022-11-28 | 4 | 2d |
| 8 |  | Kiểm thử chấp nhận | 1.5d | 2022-11-30 | 2022-12-01 | 6, 7 | 0d |
| 9 |  | Kiểm thử cài đặt | 1d | 2022-12-02 | 2022-12-02 | 8 | 0d |
| 10 |  | Hệ thống sẵn sàng cho sử dụng | 0d | 2022-12-02 | 2022-12-02 | 9 | 0d |

## Version 2 (data date 2022-11-07, saved 2025-10-06, file 1150080141_LAB53_Tracking.mpp)

Last finish 2022-12-02 → 2022-12-06 (+4d).

Changed:

| ID | Task | Start | Finish | Duration | Complete | Other |
| --- | --- | --- | --- | --- | --- | --- |
| 1 | **1150080141_DX_MY** | 2022-11-01 A | 2022-12-02 → 2022-12-06 (+4d) | 23d → 25d | 0% → 17% | baseline start none → 2022-11-01; baseline finish none → 2022-12-02 |
| 2 | **Kiểm thử đơn vị** | 2022-11-01 A | 2022-11-23 → 2022-11-25 (+2d) | 15.5d → 17.5d | 0% → 26% | baseline start none → 2022-11-01; baseline finish none → 2022-11-23 |
| 3 | Kiểm thử đơn vị | 2022-11-01 A | 2022-11-10 → 2022-11-15 (+5d) | 8d → 10d | 0% → 50% | baseline start none → 2022-11-01; baseline finish none → 2022-11-10 |
| 4 | Kiểm thử tích hợp | 2022-11-09 → 2022-11-11 (+2d) | 2022-11-23 → 2022-11-25 (+2d) |  |  | baseline start none → 2022-11-09; baseline finish none → 2022-11-23 |
| 5 | **Kiểm thử hệ thống** | 2022-11-23 → 2022-11-25 (+2d) | 2022-12-02 → 2022-12-06 (+4d) |  |  | baseline start none → 2022-11-23; baseline finish none → 2022-12-02 |
| 6 | Kiểm thử chức năng | 2022-11-23 → 2022-11-25 (+2d) | 2022-11-30 → 2022-12-02 (+2d) |  |  | baseline start none → 2022-11-23; baseline finish none → 2022-11-30 |
| 7 | Kiểm thử hiệu suất | 2022-11-23 → 2022-11-25 (+2d) | 2022-11-28 → 2022-11-30 (+2d) |  |  | baseline start none → 2022-11-23; baseline finish none → 2022-11-28 |
| 8 | Kiểm thử chấp nhận | 2022-11-30 → 2022-12-02 (+2d) | 2022-12-01 → 2022-12-05 (+4d) |  |  | baseline start none → 2022-11-30; baseline finish none → 2022-12-01 |
| 9 | Kiểm thử cài đặt | 2022-12-02 → 2022-12-06 (+4d) | 2022-12-02 → 2022-12-06 (+4d) |  |  | baseline start none → 2022-12-02; baseline finish none → 2022-12-02 |
| 10 | Hệ thống sẵn sàng cho sử dụng | 2022-12-02 → 2022-12-06 (+4d) | 2022-12-02 → 2022-12-06 (+4d) |  |  | baseline start none → 2022-12-02; baseline finish none → 2022-12-02 |
